# ORCHARD PATH III

Schedule from MS Project XML, 2025-05-27 to 2026-08-20, status date 2025-04-03, A marks actual dates.

## Calendars

- Standard: Mon-Fri 07:00-12:00, 12:30-15:30; Sat-Sun off. Exceptions (off unless hours are given): 2025-07-04 to 2039-07-04 (4th of July, recurring), 2025-09-01 to 2039-09-05 (Labor Day, recurring), 2025-11-27 to 2039-11-28 (Thanksgiving, recurring), 2025-12-25 (Christmas), 2026-01-01 to 2040-01-01 (New Years, recurring), 2026-05-25 to 2040-05-28 (Memorial Day, recurring), 2026-06-19 (Juneteenth), 2026-07-03 (4th of July Observed).

## Schedule

| ID | WBS | Task | Type | Duration | Start | Finish | Predecessors | Complete | Remaining | Baseline start | Baseline finish | Baseline duration | Baseline 1 start | Baseline 1 finish | Total slack | Text1 | Text2 | Text3 |
| --- | --- | --- | --- | --- | --- | --- | --- | --- | --- | --- | --- | --- | --- | --- | --- | --- | --- | --- |
| 1 | 188 | **ORCHARD PATH III** |  | 315d | 2025-05-27 A | 2026-08-20 |  | 54% | 143.48d | 2025-05-27 | 2026-07-10 | 288d | 2025-05-27 | 2026-07-23 | 0d |  |  |  |
| 2 | 188.103 | **CONSTRUCTION DURATION** |  | 311d | 2025-06-02 A | 2026-08-20 |  |  | 311d | 2025-05-27 | 2026-07-10 | 288d | 2025-05-27 | 2026-07-23 | 0d |  |  |  |
| 3 | 188.103.1 | START CONSTRUCTION | milestone | 0d | 2025-06-02 A | 2025-06-02 |  | 99% | 0d | 2025-05-27 | 2025-05-27 |  | 2025-05-27 | 2025-05-27 | 0d |  |  |  |
| 4 | 188.103.2 | JOB COMPLETION | milestone | 0d | 2026-08-20 | 2026-08-20 | 121 |  |  | 2026-07-10 | 2026-07-10 |  | 2026-07-23 | 2026-07-23 | 0d |  |  |  |
| 6 | 188.1 | MOB | milestone | 0d | 2025-05-27 A | 2025-05-27 A | 3 | 100% |  | 2025-05-27 | 2025-05-27 | 1d | 2025-05-27 | 2025-05-27 |  |  |  |  |
| 7 | 188.85 | SURVEY | milestone | 0d | 2025-05-27 A | 2025-05-27 A | 6 | 100% |  | 2025-05-28 | 2025-05-28 | 1d | 2025-05-28 | 2025-05-28 |  | 2 | DY | 1 |
| 8 | 188.86 | SWPP | milestone | 0d | 2025-05-28 A | 2025-05-28 A | 6 | 100% |  | 2025-05-28 | 2025-05-29 | 2d | 2025-05-28 | 2025-05-29 |  | 2 | DY | 1 |
| 9 | 188.87 | TEMPORARY UTILITIES | milestone | 0d | 2025-05-28 A | 2025-05-28 A | 6 | 100% |  | 2025-05-28 | 2025-05-29 | 2d | 2025-05-28 | 2025-05-29 |  | 2 | DY | 1 |
| 10 | 188.88 | DIG ALERT / POTHOLE |  | 1d | 2025-05-28 A | 2025-05-28 A | 8SS | 100% |  | 2025-05-28 | 2025-05-30 | 3d | 2025-05-28 | 2025-05-30 |  | 2 | DY | 1 |
| 12 | 188.91 | **DEMO AND EARTHWORK** |  | 99d | 2025-06-02 A | 2025-10-20 A |  | 100% |  | 2025-06-02 | 2025-07-01 | 22d | 2025-06-02 | 2025-07-01 |  |  |  |  |
| 13 | 1.7.1 | DEMO |  | 1d | 2025-06-02 A | 2025-06-02 A | 10, 7 | 100% |  | 2025-06-02 | 2025-06-02 | 1d | 2025-06-02 | 2025-06-02 |  |  |  |  |
| 14 | 1.7.2 | MASS GRADING |  | 15d | 2025-06-02 A | 2025-06-23 A | 9, 13 | 100% |  | 2025-06-03 | 2025-06-23 | 15d | 2025-06-03 | 2025-06-23 |  |  |  |  |
| 15 | 1.7.3 | UTILITIES |  | 6d | 2025-10-13 A | 2025-10-20 A | 14 | 100% |  | 2025-06-24 | 2025-07-01 | 6d | 2025-06-24 | 2025-07-01 |  |  |  |  |
| 17 | 188.158 | **FOUNDATION AND UTILITIES** |  | 73d | 2025-07-18 A | 2025-10-29 A |  | 100% |  | 2025-06-24 | 2025-09-08 | 53d | 2025-07-18 | 2025-10-01 |  |  |  |  |
| 18 | 188.158.21 | F/P/S FOOTINGS AND PADS |  | 58d | 2025-07-18 A | 2025-10-08 A | 14, 114 | 100% |  | 2025-06-24 | 2025-07-22 | 20d | 2025-07-18 | 2025-08-14 |  |  |  |  |
| 19 | 188.158.22 | F/P/S FOUNDATION WALLS |  | 40d | 2025-07-21 A | 2025-09-26 A | 18SS+10d | 100% |  | 2025-07-09 | 2025-08-12 | 25d | 2025-08-01 | 2025-09-05 |  |  |  |  |
| 20 | 188.158.23 | WATERPROOF AND BACKFILL 1/2 |  | 2d | 2025-08-21 A | 2025-09-30 A | 19 | 100% |  | 2025-08-13 | 2025-08-19 | 5d | 2025-09-08 | 2025-09-12 |  |  |  |  |
| 21 | 188.158.25 | UTILITIES - IN BUILDING | milestone | 0d | 2025-09-15 A | 2025-09-18 A | 15, 19SS+20d | 100% |  | 2025-08-06 | 2025-08-12 | 5d | 2025-08-29 | 2025-09-05 |  |  |  |  |
| 22 | 188.158.26 | SOG |  | 5d | 2025-10-02 A | 2025-10-08 A | 21 | 100% |  | 2025-08-13 | 2025-08-19 | 5d | 2025-09-08 | 2025-09-12 |  |  |  |  |
| 23 | 1.8.6 | WATERPROOF AND BACKFILL 1/2 |  | 7d | 2025-10-03 A | 2025-10-29 A | 22, 26 | 100% |  | 2025-09-02 | 2025-09-08 | 5d | 2025-09-25 | 2025-10-01 |  |  |  |  |
| 25 | 188.159 | **PRECAST** |  | 17d | 2025-09-08 A | 2025-09-30 A |  | 100% |  | 2025-08-20 | 2025-08-29 | 8d | 2025-09-15 | 2025-09-24 |  |  |  |  |
| 26 | 188.159.154 | PC SET - STARTING AT WEST | milestone | 0d | 2025-09-08 A | 2025-09-30 A | 22 | 100% |  | 2025-08-26 | 2025-08-29 | 8d | 2025-09-19 | 2025-09-24 |  | 17510.75 | SF | 2500 |
| 28 | 188.114 | **MID RISE APARTMENT** |  | 207d | 2025-09-16 A | 2026-07-09 |  | 52% | 98.42d | 2025-08-29 | 2026-05-21 | 186d | 2025-09-24 | 2026-06-16 | 0d |  |  |  |
| 29 | 1.10.1 | **STEEL** |  | 5d | 2025-09-16 A | 2025-09-22 A |  | 100% |  | 2025-08-29 | 2025-09-05 | 5d | 2025-09-24 | 2025-09-30 |  |  |  |  |
| 30 | 1.10.1.1 | STEEL INSTALLATION |  | 5d | 2025-09-16 A | 2025-09-22 A | 26SS+3d | 100% |  | 2025-08-29 | 2025-09-05 | 5d | 2025-09-24 | 2025-09-30 |  |  |  |  |

| ID | WBS | Task | Type | Duration | Start | Finish | Predecessors | Complete | Remaining | Baseline start | Baseline finish | Baseline duration | Baseline 1 start | Baseline 1 finish | Total slack | Text1 | Text2 | Text3 |
| --- | --- | --- | --- | --- | --- | --- | --- | --- | --- | --- | --- | --- | --- | --- | --- | --- | --- | --- |
| 31 | 188.114.148 | **BUILDING STRUCTURE** |  | 55d | 2025-09-18 A | 2025-12-04 A |  | 100% |  | 2025-09-08 | 2025-12-03 | 62d | 2025-10-01 | 2025-12-29 |  |  |  |  |
| 32 | 188.114.148.51 | LAYOUT FOR WALL PANELS |  | 1d | 2025-09-18 A | 2025-09-18 A | 26SS+8d | 100% |  | 2025-09-08 | 2025-09-08 | 1d | 2025-10-01 | 2025-10-01 |  | 6503 | SF |  |
| 33 | 188.114.148.52 | WOOD FRAMING - LEVEL 1 - WALL PANELS, TRUSSES AND DECK |  | 8d | 2025-09-23 A | 2025-10-02 A | 32 | 100% |  | 2025-09-09 | 2025-09-29 | 15d | 2025-10-02 | 2025-10-22 |  | 6503 | SF | 1445.47 |
| 34 | 188.114.148.53 | WOOD FRAMING - LEVEL 2 - WALL PANELS, TRUSSES AND DECK |  | 11d | 2025-10-03 A | 2025-10-17 A | 33, 30 | 100% |  | 2025-09-30 | 2025-10-16 | 13d | 2025-10-23 | 2025-11-10 |  | 30203 | SF | 1445.47 |
| 35 | 188.114.148.57 | WOOD FRAMING - LEVEL 3 - WALL PANELS, TRUSSES AND DECK |  | 8d | 2025-10-17 A | 2025-10-29 A | 34 | 100% |  | 2025-10-17 | 2025-11-04 | 13d | 2025-11-11 | 2025-11-27 |  | 30203 | SF | 1445.47 |
| 36 | 188.114.148.54 | WOOD FRAMING - LEVEL 4 - WALL PANELS |  | 14d | 2025-11-04 A | 2025-11-21 A | 35 | 100% |  | 2025-11-05 | 2025-11-18 | 10d | 2025-12-01 | 2025-12-12 |  | 30203 | SF | 1445.47 |
| 37 | 188.114.148.55 | ROOF FRAMING |  | 8d | 2025-11-18 A | 2025-12-04 A | 36 | 100% |  | 2025-11-19 | 2025-12-03 | 10d | 2025-12-15 | 2025-12-29 |  | 30265 | SF | 1445.47 |
| 38 | 188.114.1 | **STAIRS** |  | 49d | 2025-10-13 A | 2025-12-19 A |  | 100% |  | 2025-11-19 | 2025-12-03 | 10d | 2025-12-15 | 2025-12-29 |  |  |  |  |
| 39 | 188.114.1.60 | STAIR H |  | 5d | 2025-10-13 A | 2025-12-01 A | 36 | 100% |  | 2025-11-19 | 2025-11-25 | 5d | 2025-12-15 | 2025-12-19 |  | 1 | EA | 0.03 |
| 40 | 188.114.1.61 | STAIR I |  | 14d | 2025-10-27 A | 2025-12-19 A | 39 | 100% |  | 2025-11-26 | 2025-12-03 | 5d | 2025-12-22 | 2025-12-29 |  | 1 | EA | 0.03 |
| 41 | 188.114.149 | **MEPFP ROUGH IN** |  | 67d | 2025-10-05 A | 2026-01-09 A |  | 100% |  | 2025-10-17 | 2025-12-24 | 48d | 2025-11-11 | 2026-01-20 |  |  |  |  |
| 42 | 188.114.149.50 | PLUMBING, WASTE AND VENT ROUGH-IN |  | 49d | 2025-10-27 A | 2026-01-06 A | 34 | 100% |  | 2025-10-17 | 2025-11-20 | 25d | 2025-11-11 | 2025-12-16 |  | 157580 | SF | 2101.07 |
| 43 | 188.114.149.51 | FIRE PROTECTION ROUGH-IN |  | 31d | 2025-11-24 A | 2026-01-08 A | 34 | 100% |  | 2025-10-17 | 2025-11-20 | 25d | 2025-11-11 | 2025-12-16 |  | 157580 | SF | 1750.89 |
| 44 | 188.114.149.52 | FINAL PLUMBING ROUGH-IN - WATER, FIXTURE WASTE AND VENT TIE-INS TOP FLOOR | milestone | 0d | 2026-01-06 A | 2026-01-06 A | 37, 42, 43 | 100% |  | 2025-12-04 | 2025-12-10 | 5d | 2025-12-30 | 2026-01-06 |  | 157580 | SF | 3151.6 |
| 45 | 188.114.149.53 | ELECTRICAL ROUGH-IN TOP FLOOR |  | 7d | 2025-12-29 A | 2026-01-07 A | 48 | 100% |  | 2025-12-18 | 2025-12-24 | 5d | 2026-01-14 | 2026-01-20 |  | 157580 | SF | 2101.07 |
| 46 | 188.114.149.54 | HVAC ROUGH-IN, RUN CONCEALED DUCTWORK |  | 24d | 2025-10-05 A | 2026-01-09 A | 37 | 100% |  | 2025-12-04 | 2025-12-10 | 5d | 2025-12-30 | 2026-01-06 |  | 157580 | SF | 1853.88 |
| 47 | 188.114.150 | **BUILDING ENVELOPE** |  | 154d | 2025-12-01 A | 2026-07-09 |  | 33% | 103.07d | 2025-12-04 | 2026-04-03 | 85d | 2025-12-30 | 2026-04-28 | 0d |  |  |  |
| 48 | 188.114.150.65 | ROOFING |  | 21d | 2025-12-01 A | 2026-01-06 A | 37 | 100% |  | 2025-12-04 | 2025-12-17 | 10d | 2025-12-30 | 2026-01-13 |  | 38083 | SF | 1667.85 |
| 49 | 188.114.150.67 | TYVEK AND WINDOWS - WEST |  | 21d | 2025-12-01 A | 2026-01-06 A | 37 | 100% |  | 2025-12-04 | 2025-12-10 | 5d | 2025-12-30 | 2026-01-06 |  | 349 | EA | 8.72 |
| 50 | 188.114.150.63 | TYVEK AND WINDOWS - EAST |  | 5d | 2025-12-01 A | 2026-01-13 | 37, 49 |  | 5d | 2025-12-11 | 2025-12-17 | 5d | 2026-01-07 | 2026-01-13 | 49d | 349 | EA | 8.72 |
| 51 | 188.114.150.68 | EXTERIOR MASONRY - WEST |  | 15d | 2026-03-24 A | 2026-04-13 | 50, 49 |  | 15d | 2025-12-18 | 2026-01-09 | 15d | 2026-01-14 | 2026-02-03 | 0d | 9046 | SF | 226.15 |
| 52 | 188.114.150.64 | EXTERIOR MASONRY - EAST |  | 15d | 2026-04-14 | 2026-05-04 | 49, 51, 50 |  |  | 2026-01-12 | 2026-01-30 | 15d | 2026-02-04 | 2026-02-24 | 0d | 9046 | SF | 226.15 |
| 53 | 188.114.150.69 | EXTERIOR FINISHES - WEST |  | 25d | 2026-03-03 A | 2026-06-02 | 52SS+10d, 51SS+10d |  | 25d | 2026-01-26 | 2026-02-27 | 25d | 2026-02-18 | 2026-03-24 | 0d | 55318 | SF | 2212.72 |
| 54 | 188.114.150.66 | EXTERIOR FINISHES - EAST |  | 25d | 2026-06-03 | 2026-07-09 | 52SS+10d, 51SS+10d, 53 |  |  | 2026-03-02 | 2026-04-03 | 25d | 2026-03-25 | 2026-04-28 | 0d | 55318 | SF | 2212.72 |

| ID | WBS | Task | Type | Duration | Start | Finish | Predecessors | Complete | Remaining | Baseline start | Baseline finish | Baseline duration | Baseline 1 start | Baseline 1 finish | Total slack | Free slack | Constraint | Text1 | Text2 | Text3 |
| --- | --- | --- | --- | --- | --- | --- | --- | --- | --- | --- | --- | --- | --- | --- | --- | --- | --- | --- | --- | --- |
| 55 | 188.114.151 | **INTERIOR FINISHES** |  | 102d | 2026-01-14 A | 2026-06-05 |  | 34% | 67.5d | 2025-12-26 | 2026-05-21 | 104d | 2026-01-21 | 2026-06-16 | 0d |  |  |  |  |  |
| 56 | 188.114.151.40 | **LEVEL 4 FINISHES (19 UNITS)** |  | 76d | 2026-01-14 A | 2026-04-29 |  | 41% | 44.59d | 2025-12-26 | 2026-04-21 | 82d | 2026-01-21 | 2026-05-14 | 23d |  |  |  |  |  |
| 57 | 188.114.151.40.39 | INSULATION |  | 9d | 2026-01-14 A | 2026-01-26 A | 48, 40, 45, 46 | 100% |  | 2025-12-26 | 2026-01-02 | 5d | 2026-01-21 | 2026-01-27 |  |  |  |  |  |  |
| 58 | 188.114.151.40.40 | DRYWALL HANG |  | 5d | 2026-01-22 A | 2026-02-02 A | 57 | 100% |  | 2026-01-05 | 2026-01-14 | 8d | 2026-01-28 | 2026-02-06 |  |  |  | 26306 | SF | 1052.24 |
| 59 | 188.114.151.40.41 | DRYWALL TAPE AND SAND |  | 6d | 2026-01-28 A | 2026-02-10 A | 58SS+8d | 100% |  | 2026-01-13 | 2026-01-26 | 10d | 2026-02-05 | 2026-02-18 |  |  |  | 26306 | SF | 7227.33 |
| 60 | 188.114.151.40.42 | PAINTING |  | 10d | 2026-02-23 A | 2026-03-06 | 59SS+8d |  | 10d | 2026-01-27 | 2026-02-09 | 10d | 2026-02-19 | 2026-03-04 | 0d |  |  | 26306 | SF | 4336.4 |
| 61 | 188.114.151.40.43 | GYP-CRETE FLOORS |  | 2d | 2026-03-03 A | 2026-03-04 A |  | 100% |  | 2026-02-10 | 2026-02-11 | 2d | 2026-03-05 | 2026-03-06 |  |  | start no earlier than 2026-03-03 | 26306 | SF | 2168.2 |
| 62 | 188.114.151.40.44 | CABINETS |  | 8d | 2026-03-10 A | 2026-03-19 A | 61FS+2d | 100% |  | 2026-02-19 | 2026-03-04 | 10d | 2026-03-16 | 2026-03-27 |  |  | start no earlier than 2026-03-09 | 26306 | SF | 4336.4 |
| 63 | 188.114.151.40.45 | TOPS |  | 10d | 2026-03-24 A | 2026-04-06 | 62SS+6d |  | 10d | 2026-03-05 | 2026-03-18 | 10d | 2026-03-30 | 2026-04-10 | 0d |  |  | 26306 | SF | 3613.67 |
| 64 | 188.114.151.40.47 | DOORS/HARDWARE/SPECIALTIES |  | 1d | 2026-03-20 A | 2026-03-21 A | 62SS+5d | 100% |  | 2026-03-05 | 2026-03-18 | 10d | 2026-03-30 | 2026-04-10 |  |  |  | 26306 | SF | 4336.4 |
| 65 | 188.114.151.40.48 | HARD SURFACE FLOORING |  | 10d | 2026-03-23 A | 2026-04-09 | 64SS+5d |  | 10d | 2026-03-19 | 2026-04-01 | 10d | 2026-04-13 | 2026-04-24 | 23d | 0d |  | 26306 | SF | 4336.4 |
| 66 | 188.114.151.40.49 | FINAL MEP- DEVICES, FIXTURES, PLUMBING FIXTURES, DIFFUSERS AND TRIM |  | 10d | 2026-04-10 | 2026-04-23 | 65 |  |  | 2026-04-02 | 2026-04-15 | 10d | 2026-04-27 | 2026-05-08 | 23d | 0d |  | 26306 | SF | 7227.33 |
| 67 | 188.114.151.40.50 | CARPETING / FINAL FINISHES |  | 3d | 2026-04-24 | 2026-04-28 | 66 |  |  | 2026-04-16 | 2026-04-20 | 3d | 2026-05-11 | 2026-05-13 | 23d | 0d |  | 26306 | SF | 4336.4 |
| 68 | 188.114.151.40.51 | APPLIANCES |  | 1d | 2026-04-29 | 2026-04-29 | 67 |  |  | 2026-04-21 | 2026-04-21 | 1d | 2026-05-14 | 2026-05-14 | 23d | 8d |  | 6503 | SF | 4336.4 |
| 69 | 188.114.151.41 | **LEVEL 3 FINISHES (19 UNITS)** |  | 75d | 2026-01-28 A | 2026-05-12 |  | 45% | 41.33d | 2026-01-05 | 2026-05-05 | 87d | 2026-01-28 | 2026-05-29 | 15d |  |  |  |  |  |
| 70 | 188.114.151.41.65 | INSULATION |  | 14d | 2026-01-28 A | 2026-02-16 A | 57 | 100% |  | 2026-01-05 | 2026-01-09 | 5d | 2026-01-28 | 2026-02-03 |  |  |  |  |  |  |
| 71 | 188.114.151.41.66 | DRYWALL HANG |  | 6d | 2026-02-11 A | 2026-02-24 A | 70, 58 | 100% |  | 2026-01-15 | 2026-01-26 | 8d | 2026-02-09 | 2026-02-18 |  |  |  | 26306 | SF | 1052.24 |
| 72 | 188.114.151.41.67 | DRYWALL TAPE AND SAND |  | 17d | 2026-02-25 A | 2026-03-19 A | 71SS+8d, 59 | 100% |  | 2026-01-27 | 2026-02-09 | 10d | 2026-02-19 | 2026-03-04 |  |  |  | 26306 | SF | 7227.33 |
| 73 | 188.114.151.41.68 | PAINTING |  | 7d | 2026-03-10 A | 2026-03-18 A | 72SS+8d, 60 | 100% |  | 2026-02-10 | 2026-02-23 | 10d | 2026-03-05 | 2026-03-18 |  |  |  | 26306 | SF | 4336.4 |
| 74 | 188.114.151.41.69 | GYP-CRETE FLOORS | milestone | 0d | 2026-03-19 A | 2026-03-20 A | 73, 61 | 100% |  | 2026-02-24 | 2026-02-25 | 2d | 2026-03-19 | 2026-03-20 |  |  | finish no earlier than 2026-03-20 | 26306 | SF | 2168.2 |
| 75 | 188.114.151.41.70 | CABINETS |  | 10d | 2026-03-26 A | 2026-04-08 | 74SS+4d |  | 10d | 2026-03-05 | 2026-03-18 | 10d | 2026-03-30 | 2026-04-10 | 5d | 0d |  | 26306 | SF | 4336.4 |
| 76 | 188.114.151.41.71 | TOPS |  | 10d | 2026-04-01 A | 2026-04-16 | 75SS+6d |  | 10d | 2026-03-19 | 2026-04-01 | 10d | 2026-04-13 | 2026-04-24 | 0d |  |  | 26306 | SF | 3613.67 |
| 77 | 188.114.151.41.73 | DOORS/HARDWARE/SPECIALTIES |  | 10d | 2026-04-02 | 2026-04-15 | 75SS+5d |  |  | 2026-03-19 | 2026-04-01 | 10d | 2026-04-13 | 2026-04-24 | 0d |  |  | 26306 | SF | 4336.4 |
| 78 | 188.114.151.41.74 | HARD SURFACE FLOORING |  | 10d | 2026-04-09 | 2026-04-22 | 77SS+5d |  |  | 2026-04-02 | 2026-04-15 | 10d | 2026-04-27 | 2026-05-08 | 15d | 0d |  | 26306 | SF | 4336.4 |
| 79 | 188.114.151.41.75 | FINAL MEP- DEVICES, FIXTURES, PLUMBING FIXTURES, DIFFUSERS AND TRIM |  | 10d | 2026-04-23 | 2026-05-06 | 78 |  |  | 2026-04-16 | 2026-04-29 | 10d | 2026-05-11 | 2026-05-22 | 15d | 0d |  | 26306 | SF | 7227.33 |
| 80 | 188.114.151.41.76 | CARPETING / FINAL FINISHES |  | 3d | 2026-05-07 | 2026-05-11 | 79 |  |  | 2026-04-30 | 2026-05-04 | 3d | 2026-05-26 | 2026-05-28 | 15d | 0d |  | 26306 | SF | 4336.4 |
| 81 | 188.114.151.41.77 | APPLIANCES |  | 1d | 2026-05-12 | 2026-05-12 | 80, 68 |  |  | 2026-05-05 | 2026-05-05 | 1d | 2026-05-29 | 2026-05-29 | 15d | 8d |  | 6503 | SF | 4336.4 |

Notes:
- 62: Delivery 3/9 & 3/10
- 70: Should have started 01/26/2026

| ID | WBS | Task | Duration | Start | Finish | Predecessors | Complete | Remaining | Baseline start | Baseline finish | Baseline duration | Baseline 1 start | Baseline 1 finish | Total slack | Free slack | Text1 | Text2 | Text3 |
| --- | --- | --- | --- | --- | --- | --- | --- | --- | --- | --- | --- | --- | --- | --- | --- | --- | --- | --- |
| 82 | 188.114.151.42 | **LEVEL 2 FINISHES (19 UNITS)** | 71d | 2026-02-16 A | 2026-05-26 |  | 22% | 55.13d | 2026-01-12 | 2026-05-19 | 92d | 2026-02-04 | 2026-06-12 | 7d |  |  |  |  |
| 83 | 188.114.151.42.90 | INSULATION | 6d | 2026-02-16 A | 2026-02-23 A | 70 | 100% |  | 2026-01-12 | 2026-01-16 | 5d | 2026-02-04 | 2026-02-10 |  |  |  |  |  |
| 84 | 188.114.151.42.91 | DRYWALL HANG | 10d | 2026-02-24 A | 2026-03-09 A | 83, 71SS+6d | 100% |  | 2026-01-23 | 2026-02-03 | 8d | 2026-02-17 | 2026-02-26 |  |  | 26306 | SF | 1052.24 |
| 85 | 188.114.151.42.92 | DRYWALL TAPE AND SAND | 3d | 2026-03-09 A | 2026-03-24 A | 84, 72 | 100% |  | 2026-02-10 | 2026-02-23 | 10d | 2026-03-05 | 2026-03-18 |  |  | 26306 | SF | 7227.33 |
| 86 | 188.114.151.42.93 | PAINTING | 10d | 2026-03-24 A | 2026-04-06 | 85SS+8d, 73 |  | 10d | 2026-02-24 | 2026-03-09 | 10d | 2026-03-19 | 2026-04-01 | 0d |  | 26306 | SF | 4336.4 |
| 87 | 188.114.151.42.94 | GYP-CRETE FLOORS | 2d | 2026-04-02 A | 2026-04-08 | 86, 74 |  | 2d | 2026-03-10 | 2026-03-11 | 2d | 2026-04-02 | 2026-04-03 | 0d |  | 26306 | SF | 2168.2 |
| 88 | 188.114.151.42.95 | CABINETS | 10d | 2026-04-08 A | 2026-04-29 | 87FS+5d, 75 |  | 10d | 2026-03-19 | 2026-04-01 | 10d | 2026-04-13 | 2026-04-24 | 0d |  | 26306 | SF | 4336.4 |
| 89 | 188.114.151.42.96 | TOPS | 10d | 2026-04-16 | 2026-04-29 | 88SS+6d |  |  | 2026-04-02 | 2026-04-15 | 10d | 2026-04-27 | 2026-05-08 | 0d |  | 26306 | SF | 3613.67 |
| 90 | 188.114.151.42.98 | DOORS/HARDWARE/SPECIALTIES | 10d | 2026-04-15 | 2026-04-28 | 88SS+5d |  |  | 2026-04-02 | 2026-04-15 | 10d | 2026-04-27 | 2026-05-08 | 0d |  | 26306 | SF | 4336.4 |
| 91 | 188.114.151.42.99 | HARD SURFACE FLOORING | 10d | 2026-04-22 | 2026-05-05 | 90SS+5d |  |  | 2026-04-16 | 2026-04-29 | 10d | 2026-05-11 | 2026-05-22 | 7d | 0d | 26306 | SF | 4336.4 |
| 92 | 188.114.151.42.100 | FINAL MEP- DEVICES, FIXTURES, PLUMBING FIXTURES, DIFFUSERS AND TRIM | 10d | 2026-05-06 | 2026-05-19 | 91 |  |  | 2026-04-30 | 2026-05-13 | 10d | 2026-05-26 | 2026-06-08 | 7d | 0d | 26306 | SF | 7227.33 |
| 93 | 188.114.151.42.101 | CARPETING / FINAL FINISHES | 3d | 2026-05-20 | 2026-05-22 | 92 |  |  | 2026-05-14 | 2026-05-18 | 3d | 2026-06-09 | 2026-06-11 | 7d | 0d | 26306 | SF | 4336.4 |
| 94 | 188.114.151.42.102 | APPLIANCES | 1d | 2026-05-26 | 2026-05-26 | 93, 81 |  |  | 2026-05-19 | 2026-05-19 | 1d | 2026-06-12 | 2026-06-12 | 7d |  | 6503 | SF | 4336.4 |
| 95 | 188.114.151.45 | **LEVEL 1 FINISHES (18 UNITS)** | 72d | 2026-02-25 A | 2026-06-05 |  | 26% | 53.56d | 2026-01-19 | 2026-05-21 | 89d | 2026-02-11 | 2026-06-16 | 0d |  |  |  |  |
| 96 | 188.114.151.45.105 | INSULATION | 5d | 2026-02-25 A | 2026-03-03 | 83 |  | 5d | 2026-01-19 | 2026-01-23 | 5d | 2026-02-11 | 2026-02-17 | 0d |  |  |  |  |
| 97 | 188.114.151.45.106 | DRYWALL HANG | 16d | 2026-03-09 A | 2026-03-31 A | 96, 71, 84 | 100% |  | 2026-02-04 | 2026-02-13 | 8d | 2026-02-27 | 2026-03-10 |  |  | 26306 | SF | 1052.24 |
| 98 | 188.114.151.45.107 | DRYWALL TAPE AND SAND | 5d | 2026-03-23 A | 2026-03-31 A | 97SS+6d, 72, 85 | 100% |  | 2026-02-24 | 2026-03-09 | 10d | 2026-03-19 | 2026-04-01 |  |  | 26306 | SF | 7227.33 |
| 99 | 188.114.151.45.108 | PAINTING | 8d | 2026-04-02 | 2026-04-13 | 98SS+8d, 73 |  |  | 2026-03-10 | 2026-03-19 | 8d | 2026-04-02 | 2026-04-13 | 0d |  | 26306 | SF | 4336.4 |
| 100 | 188.114.151.45.109 | GYP-CRETE FLOORS | 2d | 2026-04-14 | 2026-04-15 | 99, 74 |  |  | 2026-03-20 | 2026-03-23 | 2d | 2026-04-14 | 2026-04-15 | 0d |  | 26306 | SF | 2168.2 |
| 101 | 188.114.151.45.110 | CABINETS | 8d | 2026-04-23 | 2026-05-04 | 100FS+5d, 75 |  |  | 2026-03-31 | 2026-04-09 | 8d | 2026-04-23 | 2026-05-04 | 0d |  | 26306 | SF | 4336.4 |
| 102 | 188.114.151.45.111 | TOPS | 10d | 2026-05-01 | 2026-05-14 | 101SS+6d |  |  | 2026-04-10 | 2026-04-23 | 10d | 2026-05-05 | 2026-05-18 | 0d |  | 26306 | SF | 3613.67 |
| 103 | 188.114.151.45.112 | DOORS/HARDWARE/SPECIALTIES | 8d | 2026-04-30 | 2026-05-11 | 101SS+5d |  |  | 2026-04-10 | 2026-04-21 | 8d | 2026-05-05 | 2026-05-14 | 0d |  | 26306 | SF | 4336.4 |
| 104 | 188.114.151.45.113 | HARD SURFACE FLOORING | 8d | 2026-05-08 | 2026-05-19 | 102SS+5d |  |  | 2026-04-24 | 2026-05-05 | 8d | 2026-05-19 | 2026-05-29 | 0d |  | 26306 | SF | 4336.4 |
| 105 | 188.114.151.45.114 | FINAL MEP- DEVICES, FIXTURES, PLUMBING FIXTURES, DIFFUSERS AND TRIM | 8d | 2026-05-20 | 2026-06-01 | 104 |  |  | 2026-05-06 | 2026-05-15 | 8d | 2026-06-01 | 2026-06-10 | 0d |  | 26306 | SF | 7227.33 |
| 106 | 188.114.151.45.115 | CARPETING / FINAL FINISHES | 3d | 2026-06-02 | 2026-06-04 | 105 |  |  | 2026-05-18 | 2026-05-20 | 3d | 2026-06-11 | 2026-06-15 | 0d |  | 26306 | SF | 4336.4 |
| 107 | 188.114.151.45.116 | APPLIANCES | 1d | 2026-06-05 | 2026-06-05 | 106, 94 |  |  | 2026-05-21 | 2026-05-21 | 1d | 2026-06-16 | 2026-06-16 | 0d |  | 6503 | SF | 4336.4 |

| ID | WBS | Task | Type | Duration | Start | Finish | Predecessors | Baseline start | Baseline finish | Baseline duration | Baseline 1 start | Baseline 1 finish | Total slack | Free slack | Constraint |
| --- | --- | --- | --- | --- | --- | --- | --- | --- | --- | --- | --- | --- | --- | --- | --- |
| 109 | 188.160 | **EXTERIOR IMPROVEMENTS** |  | 295d | 2025-06-24 | 2026-08-20 |  | 2026-06-01 | 2026-07-10 | 30d | 2025-06-24 | 2026-07-14 | 0d |  |  |
| 110 | 188.160.1 | EXTERIOR IMPROVEMENTS |  | 20d | 2026-07-10 | 2026-08-06 | 54 | 2026-06-01 | 2026-06-26 | 20d | 2026-06-01 | 2026-06-29 | 0d |  | start no earlier than 2026-06-01 |
| 111 | 188.160.3 | LANDSCAPING |  | 20d | 2026-07-24 | 2026-08-20 | 110SS+10d | 2026-06-15 | 2026-07-10 | 20d | 2026-06-15 | 2026-07-14 | 0d |  |  |
| 113 | 188.160.4 | **DELAY** |  | 17d | 2025-06-24 | 2025-07-17 |  |  |  |  | 2025-06-24 | 2025-07-17 | 0d |  |  |
| 114 | 188.160.4.1 | BUILDING PERMIT ISSUANCE DELAY |  | 17d | 2025-06-24 | 2025-07-17 | 14 |  |  |  | 2025-06-24 | 2025-07-17 | 0d |  | start no earlier than 2025-06-24 |
| 116 | 188.133 | **MID RISE APARTMENT OPENING** |  | 31d | 2026-06-08 | 2026-07-22 |  | 2026-05-22 | 2026-06-26 | 25d | 2026-06-17 | 2026-07-23 | 0d |  |  |
| 117 | 188.133.20 | FLOAT / FINAL INSPECTIONS |  | 22d | 2026-06-08 | 2026-07-09 | 107 | 2026-05-22 | 2026-06-12 | 15d | 2026-06-17 | 2026-07-09 | 0d |  |  |
| 118 | 188.133.21 | TCO / CO | milestone | 0d | 2026-07-09 | 2026-07-09 | 117 | 2026-06-12 | 2026-06-12 |  | 2026-07-09 | 2026-07-09 | 0d |  |  |
| 119 | 188.133.22 | FINALIZE PUNCHLIST |  | 10d | 2026-07-09 | 2026-07-22 | 117FS-1d | 2026-06-15 | 2026-06-26 | 10d | 2026-07-10 | 2026-07-23 | 21d | 0d |  |
| 120 | 188.133.23 | SUBSTANTIAL COMPLETION / TURNOVER | milestone | 0d | 2026-07-22 | 2026-07-22 | 119FS-1d | 2026-06-26 | 2026-06-26 |  | 2026-07-22 | 2026-07-22 | 22d |  |  |
| 121 | 193 | DEMOB | milestone | 0d | 2026-08-20 | 2026-08-20 | 120, 111 | 2026-07-10 | 2026-07-10 |  | 2026-07-23 | 2026-07-23 | 0d |  |  |

Notes:
- 117: Originally had 19 days post add for permit delay
